@startgantt
title Реальный прогресс - 2026-Q2
Project starts 2026-03-16
saturday are closed
sunday are closed

2026/05/01 is closed
2026/05/09 is closed
2026/05/11 is closed
2026/06/12 is closed

printscale daily zoom 1.5
projectscale daily
today is colored in LightSalmon
!$now = %now()
[Мы сейчас здесь] as [TODAY_MARK] happens %date("YYYY-MM-dd", $now)
2026/05/21 is colored in LightSteelBlue

<style>
ganttDiagram {
  task {
    BackGroundColor lightblue
  }
  milestone {
    BackGroundColor orange
    FontColor black
  }
}
</style>
' Реальный прогресс

' BEGIN INCLUDE: /home/reutov/Documents/AI/changeswork-copy/planning/2026-Q2/gantt/preamble/common.puml
' Add team calendar, release milestones, and external dependency blocks here.
' END INCLUDE: /home/reutov/Documents/AI/changeswork-copy/planning/2026-Q2/gantt/preamble/common.puml

' BEGIN INCLUDE: /home/reutov/Documents/AI/changeswork-copy/planning/2026-Q2/gantt/preamble/actual-progress.puml
' Release milestones and factual notes for actual-progress only.
[Релиз RSCON-2438 КОДА 01.024.00] as [REL_RSCON_2438] happens at 2026/05/21
' END INCLUDE: /home/reutov/Documents/AI/changeswork-copy/planning/2026-Q2/gantt/preamble/actual-progress.puml

-- Согласования --
' BEGIN INCLUDE: /home/reutov/Documents/AI/changeswork-copy/planning/2026-Q2/gantt/includes/actual-progress/FEATURE-approvals.puml
' FEATURE: approvals
' Actual-progress overlay:
' - STORY rows are commander-plan stories actualized by linked execution tasks
' - TASK rows are current execution tasks rendered once, with many-to-many links kept in markdown

' Story layer
' Story STORY-APPROVALS-001: virtual, mapping=explicit
[PLAN BE Approval core и интеграция с ЖЦ] as [STORY_STORY_APPROVALS_001] starts 2026/04/01
[STORY_STORY_APPROVALS_001] ends 2026/06/01
[STORY_STORY_APPROVALS_001] is colored in LightSteelBlue
[STORY_STORY_APPROVALS_001] is 0% completed

' Story STORY-APPROVALS-002: virtual, mapping=explicit
[PLAN FE Страница "Согласования"] as [STORY_STORY_APPROVALS_002] starts 2026/04/06
[STORY_STORY_APPROVALS_002] ends 2026/06/05
[STORY_STORY_APPROVALS_002] is colored in LightSteelBlue
[STORY_STORY_APPROVALS_002] is 0% completed

' Execution task layer
[AN процесс согласования/утверждения (BE core)] as [TASK_AN_AP_CORE] on {A1} starts 2026/05/08
[TASK_AN_AP_CORE] ends 2026/05/12
[TASK_AN_AP_CORE] is colored in LightGreen
[TASK_AN_AP_CORE] is 0% completed
' Shifted not-started task from stale/non-open plan: AN_AP_CORE

[AN страница "Согласования" (FE): UX/компоненты/edge-cases] as [TASK_AN_AP_PAGE_FE] on {A2} starts 2026/05/08
[TASK_AN_AP_PAGE_FE] ends 2026/05/08
[TASK_AN_AP_PAGE_FE] is colored in LightGreen
[TASK_AN_AP_PAGE_FE] is 0% completed
' Shifted not-started task from stale/non-open plan: AN_AP_PAGE_FE

[BE процесс согласования и утверждения - БД+логика] as [TASK_BE_AP_CORE] on {B1} starts 2026/05/08
[TASK_BE_AP_CORE] ends 2026/05/22
[TASK_BE_AP_CORE] is colored in LightBlue
[TASK_BE_AP_CORE] is 0% completed
' Shifted not-started task from stale/non-open plan: BE_AP_CORE

[AN ЖЦ пилота: согласование/утверждение (BE)] as [TASK_AN_PILOT_LC_AP] on {A2} starts 2026/05/12
[TASK_AN_PILOT_LC_AP] ends 2026/05/12
[TASK_AN_PILOT_LC_AP] is colored in LightGreen
[TASK_AN_PILOT_LC_AP] is 0% completed
' Shifted not-started task from stale/non-open plan: AN_PILOT_LC_AP

[AN страница "Согласования" (BE): контракты/фильтры/действия] as [TASK_AN_AP_PAGE_BE] on {A1} starts 2026/05/13
[TASK_AN_AP_PAGE_BE] ends 2026/05/13
[TASK_AN_AP_PAGE_BE] is colored in LightGreen
[TASK_AN_AP_PAGE_BE] is 0% completed
' Shifted not-started task from stale/non-open plan: AN_AP_PAGE_BE

[FE страница "Согласования"] as [TASK_FE_AP_PAGE] on {F1} starts 2026/05/14
[TASK_FE_AP_PAGE] ends 2026/05/27
[TASK_FE_AP_PAGE] is colored in LightCoral
[TASK_FE_AP_PAGE] is 0% completed
' Shifted not-started task from stale/non-open plan: FE_AP_PAGE

[BE страница "Согласования" - API, логика] as [TASK_BE_AP_PAGE] on {B1} starts 2026/05/25
[TASK_BE_AP_PAGE] ends 2026/06/05
[TASK_BE_AP_PAGE] is colored in LightBlue
[TASK_BE_AP_PAGE] is 0% completed
' Shifted not-started task from stale/non-open plan: BE_AP_PAGE

[BE ЖЦ пилота - согласование/утверждение] as [TASK_BE_PILOT_LC_AP] on {B2} starts 2026/05/26
[TASK_BE_PILOT_LC_AP] ends 2026/06/01
[TASK_BE_PILOT_LC_AP] is colored in LightBlue
[TASK_BE_PILOT_LC_AP] is 0% completed
' Shifted not-started task from stale/non-open plan: BE_PILOT_LC_AP
' END INCLUDE: /home/reutov/Documents/AI/changeswork-copy/planning/2026-Q2/gantt/includes/actual-progress/FEATURE-approvals.puml

-- Артефакты --
' BEGIN INCLUDE: /home/reutov/Documents/AI/changeswork-copy/planning/2026-Q2/gantt/includes/actual-progress/FEATURE-artifacts.puml
' FEATURE: artifacts
' Actual-progress overlay:
' - STORY rows are commander-plan stories actualized by linked execution tasks
' - TASK rows are current execution tasks rendered once, with many-to-many links kept in markdown

' Story layer
' Story STORY-ARTIFACTS-001: mixed, mapping=explicit
[PLAN BE Shared backend-контур артефактов и доступ к разделу Документы] as [STORY_STORY_ARTIFACTS_001] starts 2026/03/16
[STORY_STORY_ARTIFACTS_001] ends 2026/04/29
[STORY_STORY_ARTIFACTS_001] is colored in Gainsboro
[STORY_STORY_ARTIFACTS_001] is 100% completed

' Execution task layer
[AN артефакты (BE): модель/контракты/права] as [TASK_AN_ART_BE] on {A2} starts 2026/03/31
[TASK_AN_ART_BE] ends 2026/03/31
[TASK_AN_ART_BE] is colored in LightGreen
[TASK_AN_ART_BE] is 100% completed

[BE артефакты (ссылки на документы) - БД + API] as [TASK_BE_ART] on {B2} starts 2026/04/01
[TASK_BE_ART] ends 2026/04/03
[TASK_BE_ART] is colored in LightBlue
[TASK_BE_ART] is 100% completed

[RSCON-2468 BE Дать доступ к разделу Документы для пользователей] as [TASK_RSCON_2468] on {B3} starts 2026/04/28
[TASK_RSCON_2468] ends 2026/04/29
[TASK_RSCON_2468] is colored in LightBlue
[TASK_RSCON_2468] is 100% completed
' END INCLUDE: /home/reutov/Documents/AI/changeswork-copy/planning/2026-Q2/gantt/includes/actual-progress/FEATURE-artifacts.puml

-- Внедрения --
' BEGIN INCLUDE: /home/reutov/Documents/AI/changeswork-copy/planning/2026-Q2/gantt/includes/actual-progress/FEATURE-deployments.puml
' FEATURE: deployments
' Actual-progress overlay:
' - STORY rows are commander-plan stories actualized by linked execution tasks
' - TASK rows are current execution tasks rendered once, with many-to-many links kept in markdown

' Story layer
' Story STORY-DEPLOYMENTS-001: materialized, mapping=explicit
[PLAN BE Backend foundation для внедрений] as [STORY_STORY_DEPLOYMENTS_001] starts 2026/04/14
[STORY_STORY_DEPLOYMENTS_001] ends 2026/04/29
[STORY_STORY_DEPLOYMENTS_001] is colored in Gainsboro
[STORY_STORY_DEPLOYMENTS_001] is 49% completed

' Story STORY-DEPLOYMENTS-002: materialized, mapping=explicit
[PLAN BE Жизненный цикл внедрений] as [STORY_STORY_DEPLOYMENTS_002] starts 2026/04/15
[STORY_STORY_DEPLOYMENTS_002] ends 2026/05/25
[STORY_STORY_DEPLOYMENTS_002] is colored in Gainsboro
[STORY_STORY_DEPLOYMENTS_002] is 0% completed

' Story STORY-DEPLOYMENTS-003: materialized, mapping=explicit
[PLAN FE Список внедрений] as [STORY_STORY_DEPLOYMENTS_003] starts 2026/04/06
[STORY_STORY_DEPLOYMENTS_003] ends 2026/04/10
[STORY_STORY_DEPLOYMENTS_003] is colored in Gainsboro
[STORY_STORY_DEPLOYMENTS_003] is 100% completed

' Story STORY-DEPLOYMENTS-004: materialized, mapping=explicit
[PLAN FE Форма создания и редактирования] as [STORY_STORY_DEPLOYMENTS_004] starts 2026/04/20
[STORY_STORY_DEPLOYMENTS_004] ends 2026/05/06
[STORY_STORY_DEPLOYMENTS_004] is colored in Gainsboro
[STORY_STORY_DEPLOYMENTS_004] is 100% completed

' Story STORY-DEPLOYMENTS-005: mixed, mapping=inferred
[PLAN FE Детальная страница и связанные блоки] as [STORY_STORY_DEPLOYMENTS_005] starts 2026/04/21
[STORY_STORY_DEPLOYMENTS_005] ends 2026/05/29
[STORY_STORY_DEPLOYMENTS_005] is colored in Gainsboro
[STORY_STORY_DEPLOYMENTS_005] is 0% completed

' Execution task layer
[RSCON-2346 FE список внедрений] as [TASK_RSCON_2346] on {F1} starts 2026/04/06
[TASK_RSCON_2346] ends 2026/04/10
[TASK_RSCON_2346] is colored in LightCoral
[TASK_RSCON_2346] is 100% completed

[RSCON-2349 BE внедрений БД + API] as [TASK_RSCON_2349] on {B3} starts 2026/04/17
[TASK_RSCON_2349] ends 2026/04/21
[TASK_RSCON_2349] is colored in LightBlue
[TASK_RSCON_2349] is 15% completed

[RSCON-2445 BE Базовая функциональность для внедрений] as [TASK_RSCON_2445] on {B3} starts 2026/04/28
[TASK_RSCON_2445] ends 2026/04/29
[TASK_RSCON_2445] is colored in LightBlue
[TASK_RSCON_2445] is 100% completed

[RSCON-2348 FE форма создания/редактирования внедрений] as [TASK_RSCON_2348] starts 2026/04/29
[TASK_RSCON_2348] ends 2026/05/06
[TASK_RSCON_2348] is colored in LightCoral
[TASK_RSCON_2348] is 100% completed

[AN детальная страница Внедрения] as [TASK_AN_CHD1] on {A3} starts 2026/05/08
[TASK_AN_CHD1] ends 2026/05/15
[TASK_AN_CHD1] is colored in LightGreen
[TASK_AN_CHD1] is 0% completed
' Shifted not-started task from stale/non-open plan: AN-CHD1
' Auto-assigned A3 (auto from TBD_A): AN-CHD1

[BE детальная страница Внедрения] as [TASK_BE_CHD1] on {B3} starts 2026/05/12
[TASK_BE_CHD1] ends 2026/05/18
[TASK_BE_CHD1] is colored in LightBlue
[TASK_BE_CHD1] is 0% completed
' Shifted not-started task from stale/non-open plan: BE-CHD1
' Auto-assigned B3 (auto from TBD_B): BE-CHD1

[RSCON-2347 FE детальная внедрения] as [TASK_RSCON_2347] on {F2} starts 2026/05/15
[TASK_RSCON_2347] ends 2026/05/21
[TASK_RSCON_2347] is colored in LightCoral
[TASK_RSCON_2347] is 0% completed
' Shifted not-started task from stale/non-open plan: RSCON-2347
' Auto-assigned F2 (auto from TBD_F): RSCON-2347

[RSCON-2410 BE ЖЦ внедрений] as [TASK_RSCON_2410] on {B3} starts 2026/05/19
[TASK_RSCON_2410] ends 2026/05/25
[TASK_RSCON_2410] is colored in LightBlue
[TASK_RSCON_2410] is 0% completed
' Shifted not-started task from stale/non-open plan: RSCON-2410

[RSCON-2440 FE К Внедрениям привязать реализованный функционал Документы] as [TASK_RSCON_2440] on {F2} starts 2026/05/22
[TASK_RSCON_2440] ends 2026/05/22
[TASK_RSCON_2440] is colored in LightCoral
[TASK_RSCON_2440] is 0% completed
' Shifted not-started task from stale/non-open plan: RSCON-2440
' Auto-assigned F2 (auto from TBD_F): RSCON-2440

[RSCON-2450 BE Связь внедрения и артефактов] as [TASK_RSCON_2450] on {B3} starts 2026/05/26
[TASK_RSCON_2450] ends 2026/05/27
[TASK_RSCON_2450] is colored in LightBlue
[TASK_RSCON_2450] is 0% completed
' Shifted not-started task from stale/non-open plan: RSCON-2450

[RSCON-2449 BE Связь внедрения и скоркарт] as [TASK_RSCON_2449] on {B3} starts 2026/05/28
[TASK_RSCON_2449] ends 2026/05/29
[TASK_RSCON_2449] is colored in LightBlue
[TASK_RSCON_2449] is 0% completed
' Shifted not-started task from stale/non-open plan: RSCON-2449
' END INCLUDE: /home/reutov/Documents/AI/changeswork-copy/planning/2026-Q2/gantt/includes/actual-progress/FEATURE-deployments.puml

-- Пакеты --
' BEGIN INCLUDE: /home/reutov/Documents/AI/changeswork-copy/planning/2026-Q2/gantt/includes/actual-progress/FEATURE-packages.puml
' FEATURE: packages
' Actual-progress overlay:
' - STORY rows are commander-plan stories actualized by linked execution tasks
' - TASK rows are current execution tasks rendered once, with many-to-many links kept in markdown

' Story layer
' Story STORY-PACKAGES-001: virtual, mapping=explicit
[PLAN FE Страница Пакеты и пакетирование awaiting ratification] as [STORY_STORY_PACKAGES_001] starts 2026/04/07
[STORY_STORY_PACKAGES_001] ends 2026/06/05
[STORY_STORY_PACKAGES_001] is colored in LightSteelBlue
[STORY_STORY_PACKAGES_001] is 13% completed

' Execution task layer
[AN страница Пакеты (BE): контракты и массовые действия] as [TASK_AN_PKG_BE] on {A3} starts 2026/04/09
[TASK_AN_PKG_BE] ends 2026/04/09
[TASK_AN_PKG_BE] is colored in LightGreen
[TASK_AN_PKG_BE] is 80% completed

[AN страница Пакеты (FE): UX, компоненты и edge cases] as [TASK_AN_PKG_FE] on {A3} starts 2026/04/10
[TASK_AN_PKG_FE] ends 2026/04/10
[TASK_AN_PKG_FE] is colored in LightGreen
[TASK_AN_PKG_FE] is 80% completed

[FE страница Пакеты] as [TASK_FE_PKG_PAGE] on {F2} starts 2026/05/25
[TASK_FE_PKG_PAGE] ends 2026/06/05
[TASK_FE_PKG_PAGE] is colored in LightCoral
[TASK_FE_PKG_PAGE] is 0% completed
' Shifted not-started task from stale/non-open plan: FE_PKG_PAGE
' END INCLUDE: /home/reutov/Documents/AI/changeswork-copy/planning/2026-Q2/gantt/includes/actual-progress/FEATURE-packages.puml

-- Пилоты --
' BEGIN INCLUDE: /home/reutov/Documents/AI/changeswork-copy/planning/2026-Q2/gantt/includes/actual-progress/FEATURE-pilots.puml
' FEATURE: pilots
' Actual-progress overlay:
' - STORY rows are commander-plan stories actualized by linked execution tasks
' - TASK rows are current execution tasks rendered once, with many-to-many links kept in markdown

' Story layer
' Story STORY-PILOTS-001: virtual, mapping=explicit
[PLAN FE Workspace пилотов: артефакты и lifecycle approval] as [STORY_STORY_PILOTS_001] starts 2026/04/01
[STORY_STORY_PILOTS_001] ends 2026/05/25
[STORY_STORY_PILOTS_001] is colored in LightSteelBlue
[STORY_STORY_PILOTS_001] is 55% completed

' Execution task layer
[AN блок артефактов (FE): пилоты] as [TASK_AN_FE_PILOT_ART] on {A2} starts 2026/04/01
[TASK_AN_FE_PILOT_ART] ends 2026/04/01
[TASK_AN_FE_PILOT_ART] is colored in LightGreen
[TASK_AN_FE_PILOT_ART] is 100% completed

[AN ЖЦ пилота: согласование/утверждение (BE)] as [TASK_AN_PILOT_LC_AP] on {A3} starts 2026/04/01
[TASK_AN_PILOT_LC_AP] ends 2026/04/01
[TASK_AN_PILOT_LC_AP] is colored in LightGreen
[TASK_AN_PILOT_LC_AP] is 100% completed

[FE пилоты - блок артефакты + UI под ЖЦ] as [TASK_FE_PILOT_ART] on {F1} starts 2026/04/06
[TASK_FE_PILOT_ART] ends 2026/04/09
[TASK_FE_PILOT_ART] is colored in LightCoral
[TASK_FE_PILOT_ART] is 100% completed

[BE ЖЦ пилота - согласование/утверждение] as [TASK_BE_PILOT_LC_AP] on {B2} starts 2026/05/19
[TASK_BE_PILOT_LC_AP] ends 2026/05/25
[TASK_BE_PILOT_LC_AP] is colored in LightBlue
[TASK_BE_PILOT_LC_AP] is 0% completed
' END INCLUDE: /home/reutov/Documents/AI/changeswork-copy/planning/2026-Q2/gantt/includes/actual-progress/FEATURE-pilots.puml

-- Ролевая модель и RBAC --
' BEGIN INCLUDE: /home/reutov/Documents/AI/changeswork-copy/planning/2026-Q2/gantt/includes/actual-progress/FEATURE-roles.puml
' FEATURE: roles
' Actual-progress overlay:
' - STORY rows are commander-plan stories actualized by linked execution tasks
' - TASK rows are current execution tasks rendered once, with many-to-many links kept in markdown

' Story layer
' Story STORY-ROLES-001: virtual, mapping=explicit
[PLAN AN Аналитика ролевой модели, ролей и матрицы прав] as [STORY_STORY_ROLES_001] starts 2026/03/30
[STORY_STORY_ROLES_001] ends 2026/03/30
[STORY_STORY_ROLES_001] is colored in LightSteelBlue
[STORY_STORY_ROLES_001] is 100% completed

' Execution task layer
[AN новые роли: роли/права/матрица] as [TASK_AN_ROLES] on {A1} starts 2026/03/30
[TASK_AN_ROLES] ends 2026/03/30
[TASK_AN_ROLES] is colored in LightGreen
[TASK_AN_ROLES] is 100% completed
' END INCLUDE: /home/reutov/Documents/AI/changeswork-copy/planning/2026-Q2/gantt/includes/actual-progress/FEATURE-roles.puml

-- Скоркарты --
' BEGIN INCLUDE: /home/reutov/Documents/AI/changeswork-copy/planning/2026-Q2/gantt/includes/actual-progress/FEATURE-scorecards.puml
' FEATURE: scorecards
' Actual-progress overlay:
' - STORY rows are commander-plan stories actualized by linked execution tasks
' - TASK rows are current execution tasks rendered once, with many-to-many links kept in markdown

' Story layer
' Story STORY-SCORECARDS-001: materialized, mapping=inferred
[PLAN BE Backend foundation, шаблоны и критичность скоркарт] as [STORY_STORY_SCORECARDS_001] starts 2026/04/03
[STORY_STORY_SCORECARDS_001] ends 2026/05/08
[STORY_STORY_SCORECARDS_001] is colored in Gainsboro
[STORY_STORY_SCORECARDS_001] is 91% completed

' Story STORY-SCORECARDS-002: materialized, mapping=inferred
[PLAN FE Workspace скоркарты: вкладка, деталка, источники и использование] as [STORY_STORY_SCORECARDS_002] starts 2026/04/08
[STORY_STORY_SCORECARDS_002] ends 2026/05/08
[STORY_STORY_SCORECARDS_002] is colored in Gainsboro
[STORY_STORY_SCORECARDS_002] is 88% completed

' Story STORY-SCORECARDS-003: materialized, mapping=inferred
[PLAN FE Создание, редактирование и привязка скоркарты] as [STORY_STORY_SCORECARDS_003] starts 2026/04/08
[STORY_STORY_SCORECARDS_003] ends 2026/06/02
[STORY_STORY_SCORECARDS_003] is colored in Gainsboro
[STORY_STORY_SCORECARDS_003] is 68% completed

' Execution task layer
[RSCON-2343 BE Сущность скоркарты] as [TASK_RSCON_2343] on {B2} starts 2026/04/03
[TASK_RSCON_2343] ends 2026/04/09
[TASK_RSCON_2343] is colored in LightBlue
[TASK_RSCON_2343] is 100% completed

[RSCON-2342 BE Оценка критичности + шаблоны для скоркарт] as [TASK_RSCON_2342] on {B3} starts 2026/04/07
[TASK_RSCON_2342] ends 2026/04/10
[TASK_RSCON_2342] is colored in LightBlue
[TASK_RSCON_2342] is 100% completed

[RSCON-2340 FE Создание скоркарты (вручную) + наполнение вкладки скоркарт] as [TASK_RSCON_2340] on {F2} starts 2026/04/08
[TASK_RSCON_2340] ends 2026/04/21
[TASK_RSCON_2340] is colored in LightCoral
[TASK_RSCON_2340] is 100% completed

[RSCON-2344 BE Привязка скоркарты] as [TASK_RSCON_2344] on {B2} starts 2026/04/10
[TASK_RSCON_2344] ends 2026/04/10
[TASK_RSCON_2344] is colored in LightBlue
[TASK_RSCON_2344] is 100% completed

[RSCON-2339 FE Удаление блока метрик. Новая вкладка скоркарт] as [TASK_RSCON_2339] on {B1} starts 2026/05/04
[TASK_RSCON_2339] ends 2026/05/04
[TASK_RSCON_2339] is colored in LightCoral
[TASK_RSCON_2339] is 50% completed

[RSCON-2492 BE Корректировка скоркарт] as [TASK_RSCON_2492] on {B3} starts 2026/05/07
[TASK_RSCON_2492] ends 2026/05/08
[TASK_RSCON_2492] is colored in LightBlue
[TASK_RSCON_2492] is 50% completed

[RSCON-2491 FE Корректировка скоркарт] as [TASK_RSCON_2491] on {F2} starts 2026/05/07
[TASK_RSCON_2491] ends 2026/05/08
[TASK_RSCON_2491] is colored in LightCoral
[TASK_RSCON_2491] is 50% completed

[RSCON-2341 FE Прикрепление существующей скоркарты] as [TASK_RSCON_2341] on {F1} starts 2026/05/28
[TASK_RSCON_2341] ends 2026/06/02
[TASK_RSCON_2341] is colored in LightCoral
[TASK_RSCON_2341] is 0% completed
' Shifted not-started task from stale/non-open plan: RSCON-2341
' Auto-assigned F1 (auto from TBD_F): RSCON-2341
' END INCLUDE: /home/reutov/Documents/AI/changeswork-copy/planning/2026-Q2/gantt/includes/actual-progress/FEATURE-scorecards.puml

-- Формирование БТ из симуляции через AI-агента RAIN --
' BEGIN INCLUDE: /home/reutov/Documents/AI/changeswork-copy/planning/2026-Q2/gantt/includes/actual-progress/FEATURE-simulation-bt-agent.puml
' FEATURE: simulation-bt-agent
' Actual-progress overlay:
' - STORY rows are commander-plan stories actualized by linked execution tasks
' - TASK rows are current execution tasks rendered once, with many-to-many links kept in markdown

' Story layer
' Story STORY-SIMULATION-BT-AGENT-001: materialized, mapping=inferred
[PLAN BE Точка входа и контекст запуска БТ] as [STORY_STORY_SIMULATION_BT_AGENT_001] starts 2026/04/28
[STORY_STORY_SIMULATION_BT_AGENT_001] ends 2026/05/13
[STORY_STORY_SIMULATION_BT_AGENT_001] is colored in Gainsboro
[STORY_STORY_SIMULATION_BT_AGENT_001] is 21% completed

' Story STORY-SIMULATION-BT-AGENT-002: materialized, mapping=inferred
[PLAN BE Сессия диалога и оркестрация AI-агента] as [STORY_STORY_SIMULATION_BT_AGENT_002] starts 2026/04/28
[STORY_STORY_SIMULATION_BT_AGENT_002] ends 2026/05/13
[STORY_STORY_SIMULATION_BT_AGENT_002] is colored in Gainsboro
[STORY_STORY_SIMULATION_BT_AGENT_002] is 21% completed

' Story STORY-SIMULATION-BT-AGENT-003: materialized, mapping=inferred
[PLAN BE Публикация БТ, сохранение ссылки и аудит] as [STORY_STORY_SIMULATION_BT_AGENT_003] starts 2026/04/28
[STORY_STORY_SIMULATION_BT_AGENT_003] ends 2026/05/20
[STORY_STORY_SIMULATION_BT_AGENT_003] is colored in Gainsboro
[STORY_STORY_SIMULATION_BT_AGENT_003] is 16% completed

' Execution task layer
[RSCON-2480 FE агент AI - БТ по симуляции] as [TASK_RSCON_2480] on {F1} starts 2026/04/28
[TASK_RSCON_2480] ends 2026/05/13
[TASK_RSCON_2480] is colored in LightCoral
[TASK_RSCON_2480] is 30% completed

[RSCON-2479 BE агент AI - БТ по симуляции] as [TASK_RSCON_2479] on {B1} starts 2026/05/04
[TASK_RSCON_2479] ends 2026/05/07
[TASK_RSCON_2479] is colored in LightBlue
[TASK_RSCON_2479] is 0% completed

[QA агент AI - БТ по симуляции] as [TASK_QA_SIM_BT_AGENT] on {Q1} starts 2026/05/14
[TASK_QA_SIM_BT_AGENT] ends 2026/05/20
[TASK_QA_SIM_BT_AGENT] is colored in Gold
[TASK_QA_SIM_BT_AGENT] is 0% completed
' END INCLUDE: /home/reutov/Documents/AI/changeswork-copy/planning/2026-Q2/gantt/includes/actual-progress/FEATURE-simulation-bt-agent.puml

-- Симуляции --
' BEGIN INCLUDE: /home/reutov/Documents/AI/changeswork-copy/planning/2026-Q2/gantt/includes/actual-progress/FEATURE-simulations.puml
' FEATURE: simulations
' Actual-progress overlay:
' - STORY rows are commander-plan stories actualized by linked execution tasks
' - TASK rows are current execution tasks rendered once, with many-to-many links kept in markdown

' Story layer
' Story STORY-SIMULATIONS-001: materialized, mapping=explicit
[PLAN FE Артефакты на detail-странице симуляции] as [STORY_STORY_SIMULATIONS_001] starts 2026/03/19
[STORY_STORY_SIMULATIONS_001] ends 2026/05/08
[STORY_STORY_SIMULATIONS_001] is colored in Gainsboro
[STORY_STORY_SIMULATIONS_001] is 100% completed

' Execution task layer
[RSCON-2439 FE Раздел Документы СИМУЛЯЦИЯ: добавить артефакты] as [TASK_RSCON_2439] on {F1} starts 2026/04/25
[TASK_RSCON_2439] ends 2026/04/29
[TASK_RSCON_2439] is colored in LightCoral
[TASK_RSCON_2439] is 100% completed

[RSCON-2490 BE Интеграция с ФП Симуляция: создание доков с jiraId при обновлении деталки] as [TASK_RSCON_2490] on {B2} starts 2026/05/08
[TASK_RSCON_2490] ends 2026/05/08
[TASK_RSCON_2490] is colored in LightBlue
[TASK_RSCON_2490] is 100% completed
' END INCLUDE: /home/reutov/Documents/AI/changeswork-copy/planning/2026-Q2/gantt/includes/actual-progress/FEATURE-simulations.puml

-- Табличные риск-параметры --
' BEGIN INCLUDE: /home/reutov/Documents/AI/changeswork-copy/planning/2026-Q2/gantt/includes/actual-progress/FEATURE-tabular-risk-parameters.puml
' FEATURE: tabular-risk-parameters
' Actual-progress overlay:
' - STORY rows are commander-plan stories actualized by linked execution tasks
' - TASK rows are current execution tasks rendered once, with many-to-many links kept in markdown

' Story layer
' Story STORY-TABULAR-RISK-PARAMETERS-001: materialized, mapping=explicit
[PLAN BE Backend табличных риск-параметров и интеграция с источниками/запуском симуляции] as [STORY_STORY_TABULAR_RISK_PARAMETERS_001] starts 2026/04/16
[STORY_STORY_TABULAR_RISK_PARAMETERS_001] ends 2026/05/07
[STORY_STORY_TABULAR_RISK_PARAMETERS_001] is colored in Gainsboro
[STORY_STORY_TABULAR_RISK_PARAMETERS_001] is 100% completed

' Story STORY-TABULAR-RISK-PARAMETERS-002: materialized, mapping=explicit
[PLAN FE Frontend форма изменения табличных риск-параметров] as [STORY_STORY_TABULAR_RISK_PARAMETERS_002] starts 2026/04/20
[STORY_STORY_TABULAR_RISK_PARAMETERS_002] ends 2026/05/07
[STORY_STORY_TABULAR_RISK_PARAMETERS_002] is colored in Gainsboro
[STORY_STORY_TABULAR_RISK_PARAMETERS_002] is 86% completed

' Execution task layer
[RSCON-2430 BE Табличные риск-параметры: API, БД, логика] as [TASK_RSCON_2430] on {B2} starts 2026/04/17
[TASK_RSCON_2430] ends 2026/04/20
[TASK_RSCON_2430] is colored in LightBlue
[TASK_RSCON_2430] is 100% completed

[RSCON-2429 FE Переделка формы для изменения риск-параметров] as [TASK_RSCON_2429] on {F1} starts 2026/04/20
[TASK_RSCON_2429] ends 2026/04/27
[TASK_RSCON_2429] is colored in LightCoral
[TASK_RSCON_2429] is 100% completed

[RSCON-2452 BE Табличные риск-параметры - шедулер очистки файлов] as [TASK_RSCON_2452] on {F2} starts 2026/04/29
[TASK_RSCON_2452] ends 2026/05/04
[TASK_RSCON_2452] is colored in LightBlue
[TASK_RSCON_2452] is 100% completed

[QA Табличные риск-параметры] as [TASK_QA_TABULAR_RISK_PARAMETERS] on {Q1} starts 2026/05/04
[TASK_QA_TABULAR_RISK_PARAMETERS] ends 2026/05/07
[TASK_QA_TABULAR_RISK_PARAMETERS] is colored in Gold
[TASK_QA_TABULAR_RISK_PARAMETERS] is 50% completed

[RSCON-2432 BE Интеграция с ФП Симуляция: доработать передачу табличных РП при запуске симуляции] as [TASK_RSCON_2432] on {B2} starts 2026/05/06
[TASK_RSCON_2432] ends 2026/05/07
[TASK_RSCON_2432] is colored in LightBlue
[TASK_RSCON_2432] is 100% completed
' END INCLUDE: /home/reutov/Documents/AI/changeswork-copy/planning/2026-Q2/gantt/includes/actual-progress/FEATURE-tabular-risk-parameters.puml

@endgantt
